# Gant

Schedule from MS Project, 2016-03-01 to 2016-11-01, 4 hours a day, A marks actual dates.

## Calendars

- Estándar: Mon-Fri 09:00-13:00; Sat-Sun off.

## Resources

| Resource |
| --- |
| Coordinador |
| Analista Senior |
| QA Senior |
| DBA |
| Diseñador |
| Arquitecto |
| Analista Junior |
| QA Junior |
| Programador 1 |
| Programador2 |
| Programador3 |
| Programador4 |
| Diseñador Grafico |
| Asesor |

## Schedule

| ID | WBS | Task | Duration | Start | Finish | Predecessors | Complete | Remaining | Baseline start | Baseline finish | Baseline duration | Total slack | Free slack | Resources | Work | Actual work |
| --- | --- | --- | --- | --- | --- | --- | --- | --- | --- | --- | --- | --- | --- | --- | --- | --- |
| 1 | 1 | **Proyecto 2016** | 177.25d? | 2016-03-01 A | 2016-11-01 |  | 16% | 148.96d? |  |  |  |  |  |  | 970h | 437h |
| 2 | 1.1 | **Definicion de requerimientos** | 39.25d | 2016-03-01 A | 2016-04-25 |  | 38% | 24.27d |  |  |  | 4.62d | 2.62d |  | 866h | 437h |
| 3 | 1.1.1 | **Definicion y descripcion de actividades** | 11d | 2016-03-01 A | 2016-03-15 A |  | 100% |  | 2016-03-01 | 2016-03-15 | 21.75d |  |  | Analista Junior; Analista Senior | 219h | 219h |
| 4 | 1.1.1.1 | Seleccinar organizacio/empresa | 12.25d | 2016-03-01 A | 2016-03-15 A |  | 100% |  | 2016-03-01 | 2016-03-15 | 21.75d |  |  | Coordinador | 49h | 49h |
| 5 | 1.1.2 | **Relevamiento General** | 19d | 2016-03-15 A | 2016-04-11 | 4 |  | 19d | 2016-03-15 | 2016-05-03 | 71.75d | 14.62d |  | Analista Junior; Analista Senior | 388h | 154h |
| 6 | 1.1.2.1 | Investigar empresas, organización y paginas con tematicas similares | 6.75d | 2016-03-15 A | 2016-03-24 |  |  | 6.75d | 2016-03-15 | 2016-03-22 | 11.75d | 0d |  | Analista Junior | 27h |  |
| 7 | 1.1.2.2 | Realizar entrevistas a personas involucradas | 3d | 2016-03-18 A | 2016-03-23 |  |  | 3d | 2016-03-18 | 2016-03-19 | 3.75d | 0d |  | Analista Junior [91.7%] | 11h |  |
| 8 | 1.1.2.3 | Documentar entrevista | 2.75d | 2016-03-18 A | 2016-03-25 | 7 |  | 2.75d | 2016-03-19 | 2016-03-20 | 3.75d | 26.88d |  | Analista Senior | 11h |  |
| 9 | 1.1.2.4 | Relevar detalles e historia de los sistemas encontrados | 4.75d | 2016-03-15 A | 2016-03-31 | 6 |  | 4.75d | 2016-03-15 | 2016-03-18 | 7.75d | 23.38d |  | Analista Junior | 19h |  |
| 10 | 1.1.2.5 | Relevar funciones detectadas de los sistemas | 5.75d | 2016-03-22 A | 2016-04-01 | 6 |  | 5.75d | 2016-03-22 | 2016-03-26 | 9.75d | 0d |  | Analista Junior | 23h |  |
| 11 | 1.1.2.6 | Relevar tecnologias de la informacion de los sistemas | 5.75d | 2016-03-22 A | 2016-04-11 | 10 |  | 5.75d | 2016-03-22 | 2016-03-28 | 9.75d | -1.25d | 0d | Analista Junior; Analista Senior; Programador 1 | 69h |  |
| 12 | 1.1.3 | **Relevamiento detallado** | 6.25d | 2016-04-08 A | 2016-04-18 | 11 |  | 6.25d | 2016-03-31 | 2016-04-26 | 35.12d | 0d |  | Analista Junior; Analista Senior; Programador 1 | 135h |  |
| 13 | 1.1.3.1 | Describir funciones a implementar en el nuevo sistema | 5d | 2016-04-08 A | 2016-04-18 |  |  | 5d | 2016-04-08 | 2016-04-12 | 5.75d | -5.25d | 0d | Analista Junior; Analista Senior; Programador 1 | 60h |  |
| 14 | 1.1.4 | **Diagnostico de la situacion actual** | 10.25d | 2016-04-09 A | 2016-04-25 | 12 | 57% | 4.39d | 2016-04-07 | 2016-04-26 | 25d | 4.62d |  |  | 124h | 64h |
| 15 | 1.1.4.1 | Definir el diagnostico de la situacion actual | 5d | 2016-04-09 A | 2016-04-12 A |  | 100% |  | 2016-04-09 | 2016-04-12 | 5d |  |  | Analista Junior | 20h | 20h |
| 16 | 1.1.4.2 | Identificar modelo logico | 5d | 2016-04-09 A | 2016-04-12 A |  | 100% |  | 2016-04-09 | 2016-04-12 | 5d |  |  | Analista Senior | 20h | 20h |
| 17 | 1.1.4.3 | Detectar problemas y necesidades | 3d | 2016-04-11 A | 2016-04-12 A |  | 100% |  | 2016-04-11 | 2016-04-12 | 3d |  |  | Analista Junior | 12h | 12h |
| 18 | 1.1.4.4 | Elaborar informe de problemas y necesidades | 3d | 2016-04-11 A | 2016-04-12 A | 17 | 100% |  | 2016-04-11 | 2016-04-12 | 3d |  |  | Analista Junior | 12h | 12h |
| 19 | 1.1.4.5 | Establecer objetivos y alcances preliminares del nuevo sistema | 4d | 2016-04-18 | 2016-04-22 |  |  |  | 2016-04-25 | 2016-04-26 | 2d? | 5.62d |  | Analista Junior | 16h |  |
| 20 | 1.1.4.6 | Establecer lineamientos generales de trabajo durante el proyecto | 3d | 2016-04-18 | 2016-04-21 |  |  |  | 2016-04-25 | 2016-04-26 | 2d? | 6.62d |  | Analista Senior; Coordinador | 24h |  |
| 21 | 1.1.4.7 | Elaborar diagrama de tiempo | 5d | 2016-04-18 | 2016-04-25 |  |  |  | 2016-04-25 | 2016-04-26 | 2d? | 4.62d |  | Analista Senior | 20h |  |
| 22 | 1.2 | **Diseño** | 34d | 2016-04-27 | 2016-06-14 | 2 |  |  |  |  |  |  |  |  | 104h |  |
| 23 | 1.2.1 | **Objetivos y alcances definitivos del nuevo sistema** | 6d | 2016-04-27 | 2016-05-05 |  |  |  | 2016-04-12 | 2016-06-14 | 91.75d | 2d | 0d |  |  |  |
| 24 | 1.2.1.1 | Formular objetivos y alcances | 2d | 2016-04-27 | 2016-04-29 |  |  |  | 2016-04-12 | 2016-04-12 | 2d? | 2d | 0d |  |  |  |
| 25 | 1.2.1.2 | Seleccionar objetivos y alcances | 3d | 2016-04-29 | 2016-05-04 | 24 |  |  | 2016-04-12 | 2016-04-12 | 2d? | 2d | 0d |  |  |  |
| 26 | 1.2.1.3 | Formalizar objetivos y alcances | 1d | 2016-05-04 | 2016-05-05 | 25 |  |  | 2016-04-12 | 2016-04-12 | 2d? | 2d | 0d |  |  |  |

| ID | WBS | Task | Duration | Start | Finish | Predecessors | Baseline start | Baseline finish | Baseline duration | Total slack | Free slack | Resources | Work |
| --- | --- | --- | --- | --- | --- | --- | --- | --- | --- | --- | --- | --- | --- |
| 27 | 1.2.2 | **Salida del sistema** | 4d | 2016-05-05 | 2016-05-11 | 23 | 2016-04-12 | 2016-04-12 | 1.75d? | 24d |  |  |  |
| 28 | 1.2.2.1 | Formular y formalizar salidas del sistema | 4d | 2016-05-05 | 2016-05-11 | 26 | 2016-04-12 | 2016-04-12 | 2d? | 24d |  |  |  |
| 29 | 1.2.3 | **Modelo funcional** | 5d | 2016-05-05 | 2016-05-12 | 23 | 2016-04-12 | 2016-04-12 | 1.75d? | 2d | 0d |  |  |
| 30 | 1.2.3.1 | Elaborar modelo funcional | 2d | 2016-05-05 | 2016-05-09 |  | 2016-04-12 | 2016-04-12 | 2d? | 2d | 0d |  |  |
| 31 | 1.2.3.2 | Detallar alcances funcionales | 2d | 2016-05-09 | 2016-05-11 | 30 | 2016-04-12 | 2016-04-12 | 2d? | 3d |  |  |  |
| 32 | 1.2.3.3 | Diseñar los wireframe(estructura visual) | 3d | 2016-05-09 | 2016-05-12 | 30 | 2016-04-12 | 2016-04-12 | 2d? | 2d |  |  |  |
| 33 | 1.2.4 | **Diseño de Modulos** | 4d | 2016-05-12 | 2016-05-18 | 29 |  |  |  | 2d | 0d | Diseñador | 16h |
| 34 | 1.2.4.1 | Diseñar los ABM para el modelo de dominio | 1d | 2016-05-12 | 2016-05-13 |  |  |  |  | 5d |  |  |  |
| 35 | 1.2.4.2 | Diseñar modulo de servicios de registracion de usuario | 1d | 2016-05-12 | 2016-05-13 |  |  |  |  | 2d | 0d |  |  |
| 36 | 1.2.4.3 | Diseñar modulo de usuarios | 1d | 2016-05-13 | 2016-05-16 | 35 |  |  |  | 2d | 0d |  |  |
| 37 | 1.2.4.4 | Diseñar configuracion de perfil | 1d | 2016-05-13 | 2016-05-16 | 35 |  |  |  | 4d |  |  |  |
| 38 | 1.2.4.5 | Diseñar calificacion de usuarios | 2d | 2016-05-16 | 2016-05-18 | 36 |  |  |  | 2d |  |  |  |
| 39 | 1.2.4.6 | Diseñar recuperacion de usuarios y contraseñas | 1d | 2016-05-16 | 2016-05-17 | 36 |  |  |  | 3d |  |  |  |
| 40 | 1.2.4.7 | Diseñar servicios de busqueda de usuarios | 1d | 2016-05-16 | 2016-05-17 | 36 |  |  |  | 3d |  |  |  |
| 41 | 1.2.4.8 | Diseñar servicio de notificaciones | 1d | 2016-05-13 | 2016-05-16 | 35 |  |  |  | 4d |  |  |  |
| 42 | 1.2.5 | **Modelo de datos** | 6d | 2016-05-18 | 2016-05-26 | 29, 33 | 2016-04-12 | 2016-04-12 | 1.75d? | 2d | 0d |  |  |
| 43 | 1.2.5.1 | Elaborar modelo de datos (distribucion de las tablas de base de dato) | 2d | 2016-05-18 | 2016-05-20 |  | 2016-04-12 | 2016-04-12 | 2d? | 6d |  |  |  |
| 44 | 1.2.5.2 | Elaborar maquinas de estados | 3d | 2016-05-18 | 2016-05-23 |  | 2016-04-12 | 2016-04-12 | 2d? | 2d | 0d |  |  |
| 45 | 1.2.5.3 | Diseñar la arquitectura de la aplicación | 3d | 2016-05-23 | 2016-05-26 | 44 | 2016-04-12 | 2016-04-12 | 2d? | 2d |  |  |  |
| 46 | 1.2.6 | **Planificacion de pruebas** | 11d | 2016-05-26 | 2016-06-10 | 42 | 2016-04-12 | 2016-04-12 | 1.75d? | 2d |  | QA Junior; QA Senior | 88h |
| 47 | 1.2.6.1 | Crear una linea base de pruebas funcionales | 3d | 2016-05-26 | 2016-05-31 |  | 2016-04-12 | 2016-04-12 | 2d? | 2d | 0d |  |  |
| 48 | 1.2.6.2 | Elaborar un plan de pruebas | 3d | 2016-05-31 | 2016-06-03 | 47 | 2016-04-12 | 2016-04-12 | 2d? | 2d | 0d |  |  |
| 49 | 1.2.6.3 | Diseñar pruebas de unidad | 2d | 2016-06-03 | 2016-06-07 | 48 | 2016-04-12 | 2016-04-12 | 2d? | 2d | 0d |  |  |
| 50 | 1.2.6.4 | Diseñar pruebas de integracion | 2d | 2016-06-07 | 2016-06-09 | 49 | 2016-04-12 | 2016-04-12 | 2d? | 2d | 0d |  |  |
| 51 | 1.2.6.5 | Diseñar pruebas de carga | 2d | 2016-06-03 | 2016-06-07 | 48 | 2016-04-12 | 2016-04-12 | 2d? | 5d |  |  |  |
| 52 | 1.2.6.6 | Realizar pruebas de regresion | 1d | 2016-06-09 | 2016-06-10 | 50 |  |  |  | 2d |  |  |  |
| 53 | 1.2.6.7 | Realizar pruebas de aceptacion | 1d | 2016-06-09 | 2016-06-10 | 50 |  |  |  | 2d |  |  |  |
| 54 | 1.2.6.8 | Diseñar pruebas de seguridad por niveles de usuarios | 2d | 2016-06-03 | 2016-06-07 | 48 | 2016-04-12 | 2016-04-12 | 2d? | 5d |  |  |  |
| 55 | 1.2.6.9 | Diseñar plan de control de calidad | 2d | 2016-06-03 | 2016-06-07 | 48 | 2016-04-12 | 2016-04-12 | 2d? | 5d |  |  |  |
| 56 | 1.2.6.10 | Identificar y planificar casos de prueba | 2d | 2016-05-31 | 2016-06-02 | 47 | 2016-04-12 | 2016-04-12 | 2d? | 8d |  |  |  |

| ID | WBS | Task | Duration | Start | Finish | Predecessors | Baseline start | Baseline finish | Baseline duration | Total slack | Free slack |
| --- | --- | --- | --- | --- | --- | --- | --- | --- | --- | --- | --- |
| 57 | 1.3 | **Desarrollo e Implemtacion** | 100d | 2016-06-14 | 2016-11-01 | 22 |  |  |  |  |  |
| 58 | 1.3.1 | **Programacion y documentacion** | 1d | 2016-06-14 | 2016-06-15 |  | 2016-04-12 | 2016-11-01 | 291.75d | 99d |  |
| 59 | 1.3.1.1 | Documentar código fuente | 1d | 2016-06-14 | 2016-06-15 |  |  |  |  | 99d |  |
| 60 | 1.3.2 | **Implementacion** | 10d | 2016-06-14 | 2016-06-28 |  | 2016-04-12 | 2016-04-12 | 2d? | 64.12d | 0d |
| 61 | 1.3.2.1 | Crear la linea base de frontend | 2d | 2016-06-14 | 2016-06-16 |  | 2016-04-12 | 2016-04-12 | 2d? | 64.12d | 0d |
| 62 | 1.3.2.2 | Estableces la jerarquia de carpetas de frontend | 3d | 2016-06-14 | 2016-06-17 |  | 2016-04-12 | 2016-04-12 | 2d? | 87d |  |
| 63 | 1.3.2.3 | Crear archivos iniciales(imágenes temp,htlm base) y maqueta inicial | 3d | 2016-06-14 | 2016-06-17 |  | 2016-04-12 | 2016-04-12 | 2d? | 87d |  |
| 64 | 1.3.2.4 | Importar e integrar librerias comunes de estilos | 2d | 2016-06-14 | 2016-06-16 |  | 2016-04-12 | 2016-04-12 | 2d? | 88d |  |
| 65 | 1.3.2.5 | Importar e integrar librerias comunes de comportamiento(js) | 3d | 2016-06-16 | 2016-06-21 | 61 | 2016-04-12 | 2016-04-12 | 2d? | 85d |  |
| 66 | 1.3.2.6 | Elaborar diseño grafico del sitio | 2d | 2016-06-16 | 2016-06-20 | 61 | 2016-04-12 | 2016-04-12 | 2d? | 86d |  |
| 67 | 1.3.2.7 | Crear la linea base de backend(crear un nuevo proyacto con conf inicial) | 3d | 2016-06-16 | 2016-06-21 | 61 | 2016-04-12 | 2016-04-12 | 2d? | 64.12d | 0d |
| 68 | 1.3.2.8 | Crear la base de datos | 1d | 2016-06-21 | 2016-06-22 | 67 | 2016-04-12 | 2016-04-12 | 2d? | 84d |  |
| 69 | 1.3.2.9 | Configurar la base de datos | 1d | 2016-06-21 | 2016-06-22 | 67 | 2016-04-12 | 2016-04-12 | 2d? | 84d |  |
| 70 | 1.3.2.10 | Armar esquema de la bd | 1d | 2016-06-21 | 2016-06-22 | 67 | 2016-04-12 | 2016-04-12 | 2d? | 64.12d | 0d |
| 71 | 1.3.2.11 | Programar el mapeo objeto-relacional | 1d | 2016-06-22 | 2016-06-23 | 70 | 2016-04-12 | 2016-04-12 | 2d? | 83d |  |
| 72 | 1.3.2.12 | Implementar roles y restriciones de usuarios | 3d | 2016-06-22 | 2016-06-27 | 70 | 2016-04-12 | 2016-04-12 | 2d? | 81d |  |
| 73 | 1.3.2.13 | Crear estructra de maquetas a partir de los eireframe | 3d | 2016-06-22 | 2016-06-27 | 70 | 2016-04-12 | 2016-04-12 | 2d? | 81d |  |
| 74 | 1.3.2.14 | Implementar calidaciones de datos | 3d | 2016-06-22 | 2016-06-27 | 70 |  |  |  | 81d |  |
| 75 | 1.3.2.15 | Implementar consideracionde de seguridad | 4d | 2016-06-22 | 2016-06-28 | 70 | 2016-04-12 | 2016-04-12 | 2d? | 64.12d | 0d |
| 76 | 1.3.3 | **Ejecucion, documentacion y retroalimentacion de pruebas** | 10d | 2016-06-28 | 2016-07-12 | 60 | 2016-04-12 | 2016-04-12 | 2d? | 64.12d |  |
| 77 | 1.3.3.1 | Desplegar sistema de entorno de testing | 2d | 2016-06-28 | 2016-06-30 | 75 | 2016-04-12 | 2016-04-12 | 2d? | 64.12d | 0d |
| 78 | 1.3.3.2 | Ejecutar pruebas planificadas | 1d | 2016-06-30 | 2016-07-01 | 75, 77 | 2016-04-12 | 2016-04-12 | 1.75d? | 64.12d | 0d |
| 79 | 1.3.3.3 | Elaborar reportes de pruebas | 3d | 2016-07-01 | 2016-07-06 | 78 | 2016-04-12 | 2016-04-12 | 2d? | 64.12d | 0d |
| 80 | 1.3.3.4 | Elaborar documentacion | 4d | 2016-07-06 | 2016-07-12 | 79 | 2016-04-12 | 2016-04-12 | 2d? | 64.12d |  |

| ID | WBS | Task | Type | Duration | Start | Finish | Predecessors | Baseline start | Baseline finish | Baseline duration | Total slack |
| --- | --- | --- | --- | --- | --- | --- | --- | --- | --- | --- | --- |
| 81 | 1.4 | **Planificacion de Capacitacion** |  | 1d? | 2016-03-01 | 2016-03-01 |  | 2016-04-12 | 2016-04-12 | 2d? | 175d |
| 82 | 1.4.1 | Establecer plan de capacitacion |  | 1d? | 2016-03-01 | 2016-03-01 |  |  |  |  | 175d |
| 83 | 1.4.2 | Elaboraar plan de capacitacion |  | 1d? | 2016-03-01 | 2016-03-01 |  |  |  |  | 175d |
| 84 | 1.5 | **Manual de usuario del sistema** |  | 15d | 2016-10-11 | 2016-10-31 | 80 | 2016-04-12 | 2016-04-12 | 1.75d? |  |
| 85 | 1.5.1 | Elaborar manual de usuario | manual | 1d? | 2016-10-11 | 2016-10-11 |  | 2016-04-12 | 2016-04-12 | 2d? |  |
