# Gant

Schedule from MS Project, 2016-03-01 to 2016-11-15, 4 hours a day, A marks actual dates.

## Calendars

- Estándar: Mon-Fri 09:00-13:00; Sat-Sun off.

## Resources

| Resource |
| --- |
| Coordinador |
| Analista Senior |
| QA Senior |
| DBA |
| Diseñador |
| Arquitecto |
| Analista Junior |
| QA Junior |
| Programador 1 |
| Programador2 |
| Programador3 |
| Programador4 |
| Diseñador Grafico |
| Asesor |

## Schedule

| ID | WBS | Task | Type | Duration | Start | Finish | Predecessors | Complete | Remaining | Actual start | Baseline start | Baseline finish | Baseline duration | Total slack | Free slack | Resources | Work | Actual work |
| --- | --- | --- | --- | --- | --- | --- | --- | --- | --- | --- | --- | --- | --- | --- | --- | --- | --- | --- |
| 1 | 1 | Proyecto 2016 - SalePartido | manual | 177.25d | 2016-03-01 A | 2016-11-03 |  | 38% | 109.89d |  |  |  |  |  |  |  |  |  |
| 2 | 2 | **Entrega Etapa Definición de Requerimientos** |  | 0d | 2016-04-25 | 2016-04-25 |  | 38% | 0d | 2016-03-01 |  |  |  |  |  |  | 874h | 445h |
| 3 | 2.1 | **Definicion de requerimientos** |  | 40.12d | 2016-03-01 A | 2016-04-25 |  | 38% | 24.81d |  |  |  |  |  |  |  | 874h | 445h |
| 4 | 2.1.1 | **Definicion y descripcion de actividades** |  | 11d | 2016-03-01 A | 2016-03-15 A |  | 100% |  |  | 2016-03-01 | 2016-03-15 | 21.75d |  |  | Analista Junior; Analista Senior | 227h | 227h |
| 5 | 2.1.1.1 | Seleccinar organizacio/empresa |  | 12.25d | 2016-03-01 A | 2016-03-15 A |  | 100% |  |  | 2016-03-01 | 2016-03-15 | 21.75d |  |  | Coordinador | 49h | 49h |
| 6 | 2.1.2 | **Relevamiento General** |  | 19d | 2016-03-15 A | 2016-04-11 | 5 |  | 19d |  | 2016-03-15 | 2016-05-03 | 71.75d | 10.62d |  | Analista Junior; Analista Senior | 388h | 154h |
| 7 | 2.1.2.1 | Investigar empresas, organización y paginas con tematicas similares |  | 6.75d | 2016-03-15 A | 2016-03-24 |  |  | 6.75d |  | 2016-03-15 | 2016-03-22 | 11.75d | 0d |  | Analista Junior | 27h |  |
| 8 | 2.1.2.2 | Realizar entrevistas a personas involucradas |  | 3d | 2016-03-18 A | 2016-03-23 |  |  | 3d |  | 2016-03-18 | 2016-03-19 | 3.75d | 0d |  | Analista Junior [91.7%] | 11h |  |
| 9 | 2.1.2.3 | Documentar entrevista |  | 2.75d | 2016-03-18 A | 2016-03-25 | 8 |  | 2.75d |  | 2016-03-19 | 2016-03-20 | 3.75d | 20.88d |  | Analista Senior | 11h |  |
| 10 | 2.1.2.4 | Relevar detalles e historia de los sistemas encontrados |  | 4.75d | 2016-03-15 A | 2016-03-31 | 7 |  | 4.75d |  | 2016-03-15 | 2016-03-18 | 7.75d | 17.38d |  | Analista Junior | 19h |  |
| 11 | 2.1.2.5 | Relevar funciones detectadas de los sistemas |  | 5.75d | 2016-03-22 A | 2016-04-01 | 7 |  | 5.75d |  | 2016-03-22 | 2016-03-26 | 9.75d | 0d |  | Analista Junior | 23h |  |
| 12 | 2.1.2.6 | Relevar tecnologias de la informacion de los sistemas |  | 5.75d | 2016-03-22 A | 2016-04-11 | 11 |  | 5.75d |  | 2016-03-22 | 2016-03-28 | 9.75d | -1.25d | 0d | Analista Junior; Analista Senior; Programador 1 | 69h |  |
| 13 | 2.1.3 | **Relevamiento detallado** |  | 6.25d | 2016-04-08 A | 2016-04-18 | 12 |  | 6.25d |  | 2016-03-31 | 2016-04-26 | 35.12d | 0d |  | Analista Junior; Analista Senior; Programador 1 | 135h |  |
| 14 | 2.1.3.1 | Describir funciones a implementar en el nuevo sistema |  | 5d | 2016-04-08 A | 2016-04-18 |  |  | 5d |  | 2016-04-08 | 2016-04-12 | 5.75d | -5.25d | 0d | Analista Junior; Analista Senior; Programador 1 | 60h |  |
| 15 | 2.1.4 | **Diagnostico de la situacion actual** |  | 10.25d | 2016-04-09 A | 2016-04-25 | 13 | 57% | 4.39d |  | 2016-04-07 | 2016-04-26 | 25d | 0.62d |  |  | 124h | 64h |
| 16 | 2.1.4.1 | Definir el diagnostico de la situacion actual |  | 5d | 2016-04-09 A | 2016-04-12 A |  | 100% |  |  | 2016-04-09 | 2016-04-12 | 5d |  |  | Analista Junior | 20h | 20h |
| 17 | 2.1.4.2 | Identificar modelo logico |  | 5d | 2016-04-09 A | 2016-04-12 A |  | 100% |  |  | 2016-04-09 | 2016-04-12 | 5d |  |  | Analista Senior | 20h | 20h |
| 18 | 2.1.4.3 | Detectar problemas y necesidades |  | 3d | 2016-04-11 A | 2016-04-12 A |  | 100% |  |  | 2016-04-11 | 2016-04-12 | 3d |  |  | Analista Junior | 12h | 12h |
| 19 | 2.1.4.4 | Elaborar informe de problemas y necesidades |  | 3d | 2016-04-11 A | 2016-04-12 A | 18 | 100% |  |  | 2016-04-11 | 2016-04-12 | 3d |  |  | Analista Junior | 12h | 12h |
| 20 | 2.1.4.5 | Establecer objetivos y alcances preliminares del nuevo sistema |  | 4d | 2016-04-18 | 2016-04-22 |  |  |  |  | 2016-04-25 | 2016-04-26 | 2d? | 1.62d |  | Analista Junior | 16h |  |
| 21 | 2.1.4.6 | Establecer lineamientos generales de trabajo durante el proyecto |  | 3d | 2016-04-18 | 2016-04-21 |  |  |  |  | 2016-04-25 | 2016-04-26 | 2d? | 2.62d |  | Analista Senior; Coordinador | 24h |  |
| 22 | 2.1.4.7 | Elaborar diagrama de tiempo |  | 5d | 2016-04-18 | 2016-04-25 |  |  |  |  | 2016-04-25 | 2016-04-26 | 2d? | 0.62d |  | Analista Senior | 20h |  |
| 23 | 3 | **Entrega Etapa Diseño** |  | 0d | 2016-06-14 | 2016-06-14 |  |  |  |  |  |  |  |  |  |  | 104h |  |
| 24 | 3.1 | **Diseño** |  | 34d | 2016-04-27 | 2016-06-14 | 3 |  |  |  |  |  |  |  |  |  | 104h |  |
| 25 | 3.1.1 | **Objetivos y alcances definitivos del nuevo sistema** |  | 6d | 2016-04-27 | 2016-05-05 |  |  |  |  | 2016-04-12 | 2016-06-14 | 91.75d | 2d | 0d |  |  |  |
| 26 | 3.1.1.1 | Formular objetivos y alcances |  | 2d | 2016-04-27 | 2016-04-29 |  |  |  |  | 2016-04-12 | 2016-04-12 | 2d? | 2d | 0d |  |  |  |
| 27 | 3.1.1.2 | Seleccionar objetivos y alcances |  | 3d | 2016-04-29 | 2016-05-04 | 26 |  |  |  | 2016-04-12 | 2016-04-12 | 2d? | 2d | 0d |  |  |  |
| 28 | 3.1.1.3 | Formalizar objetivos y alcances |  | 1d | 2016-05-04 | 2016-05-05 | 27 |  |  |  | 2016-04-12 | 2016-04-12 | 2d? | 2d | 0d |  |  |  |

| ID | WBS | Task | Duration | Start | Finish | Predecessors | Baseline start | Baseline finish | Baseline duration | Total slack | Free slack | Resources | Work |
| --- | --- | --- | --- | --- | --- | --- | --- | --- | --- | --- | --- | --- | --- |
| 29 | 3.1.2 | **Salida del sistema** | 4d | 2016-05-05 | 2016-05-11 | 25 | 2016-04-12 | 2016-04-12 | 1.75d? | 24d |  |  |  |
| 30 | 3.1.2.1 | Formular y formalizar salidas del sistema | 4d | 2016-05-05 | 2016-05-11 | 28 | 2016-04-12 | 2016-04-12 | 2d? | 24d |  |  |  |
| 31 | 3.1.3 | **Modelo funcional** | 5d | 2016-05-05 | 2016-05-12 | 25 | 2016-04-12 | 2016-04-12 | 1.75d? | 2d | 0d |  |  |
| 32 | 3.1.3.1 | Elaborar modelo funcional | 2d | 2016-05-05 | 2016-05-09 |  | 2016-04-12 | 2016-04-12 | 2d? | 2d | 0d |  |  |
| 33 | 3.1.3.2 | Detallar alcances funcionales | 2d | 2016-05-09 | 2016-05-11 | 32 | 2016-04-12 | 2016-04-12 | 2d? | 3d |  |  |  |
| 34 | 3.1.3.3 | Diseñar los wireframe(estructura visual) | 3d | 2016-05-09 | 2016-05-12 | 32 | 2016-04-12 | 2016-04-12 | 2d? | 2d |  |  |  |
| 35 | 3.1.4 | **Diseño de Modulos** | 4d | 2016-05-12 | 2016-05-18 | 31 |  |  |  | 2d | 0d | Diseñador | 16h |
| 36 | 3.1.4.1 | Diseñar los ABM para el modelo de dominio | 1d | 2016-05-12 | 2016-05-13 |  |  |  |  | 5d |  |  |  |
| 37 | 3.1.4.2 | Diseñar modulo de servicios de registracion de usuario | 1d | 2016-05-12 | 2016-05-13 |  |  |  |  | 2d | 0d |  |  |
| 38 | 3.1.4.3 | Diseñar modulo de usuarios | 1d | 2016-05-13 | 2016-05-16 | 37 |  |  |  | 2d | 0d |  |  |
| 39 | 3.1.4.4 | Diseñar configuracion de perfil | 1d | 2016-05-13 | 2016-05-16 | 37 |  |  |  | 4d |  |  |  |
| 40 | 3.1.4.5 | Diseñar calificacion de usuarios | 2d | 2016-05-16 | 2016-05-18 | 38 |  |  |  | 2d |  |  |  |
| 41 | 3.1.4.6 | Diseñar recuperacion de usuarios y contraseñas | 1d | 2016-05-16 | 2016-05-17 | 38 |  |  |  | 3d |  |  |  |
| 42 | 3.1.4.7 | Diseñar servicios de busqueda de usuarios | 1d | 2016-05-16 | 2016-05-17 | 38 |  |  |  | 3d |  |  |  |
| 43 | 3.1.4.8 | Diseñar servicio de notificaciones | 1d | 2016-05-13 | 2016-05-16 | 37 |  |  |  | 4d |  |  |  |
| 44 | 3.1.5 | **Modelo de datos** | 6d | 2016-05-18 | 2016-05-26 | 31, 35 | 2016-04-12 | 2016-04-12 | 1.75d? | 2d | 0d |  |  |
| 45 | 3.1.5.1 | Elaborar modelo de datos (distribucion de las tablas de base de dato) | 2d | 2016-05-18 | 2016-05-20 |  | 2016-04-12 | 2016-04-12 | 2d? | 6d |  |  |  |
| 46 | 3.1.5.2 | Elaborar maquinas de estados | 3d | 2016-05-18 | 2016-05-23 |  | 2016-04-12 | 2016-04-12 | 2d? | 2d | 0d |  |  |
| 47 | 3.1.5.3 | Diseñar la arquitectura de la aplicación | 3d | 2016-05-23 | 2016-05-26 | 46 | 2016-04-12 | 2016-04-12 | 2d? | 2d |  |  |  |
| 48 | 3.1.6 | **Planificacion de pruebas** | 11d | 2016-05-26 | 2016-06-10 | 44 | 2016-04-12 | 2016-04-12 | 1.75d? | 2d |  | QA Junior; QA Senior | 88h |
| 49 | 3.1.6.1 | Crear una linea base de pruebas funcionales | 3d | 2016-05-26 | 2016-05-31 |  | 2016-04-12 | 2016-04-12 | 2d? | 2d | 0d |  |  |
| 50 | 3.1.6.2 | Elaborar un plan de pruebas | 3d | 2016-05-31 | 2016-06-03 | 49 | 2016-04-12 | 2016-04-12 | 2d? | 2d | 0d |  |  |
| 51 | 3.1.6.3 | Diseñar pruebas de unidad | 2d | 2016-06-03 | 2016-06-07 | 50 | 2016-04-12 | 2016-04-12 | 2d? | 2d | 0d |  |  |
| 52 | 3.1.6.4 | Diseñar pruebas de integración | 2d | 2016-06-07 | 2016-06-09 | 51 | 2016-04-12 | 2016-04-12 | 2d? | 2d | 0d |  |  |
| 53 | 3.1.6.5 | Diseñar pruebas de carga | 2d | 2016-06-03 | 2016-06-07 | 50 | 2016-04-12 | 2016-04-12 | 2d? | 5d |  |  |  |
| 54 | 3.1.6.6 | Realizar pruebas de regresión | 1d | 2016-06-09 | 2016-06-10 | 52 |  |  |  | 2d |  |  |  |
| 55 | 3.1.6.7 | Realizar pruebas de aceptación | 1d | 2016-06-09 | 2016-06-10 | 52 |  |  |  | 2d |  |  |  |
| 56 | 3.1.6.8 | Diseñar pruebas de seguridad por niveles de usuarios | 2d | 2016-06-03 | 2016-06-07 | 50 | 2016-04-12 | 2016-04-12 | 2d? | 5d |  |  |  |
| 57 | 3.1.6.9 | Diseñar plan de control de calidad | 2d | 2016-06-03 | 2016-06-07 | 50 | 2016-04-12 | 2016-04-12 | 2d? | 5d |  |  |  |
| 58 | 3.1.6.10 | Identificar y planificar casos de prueba | 2d | 2016-05-31 | 2016-06-02 | 49 | 2016-04-12 | 2016-04-12 | 2d? | 8d |  |  |  |

| ID | WBS | Task | Duration | Start | Finish | Predecessors | Baseline start | Baseline finish | Baseline duration | Total slack | Free slack | Resources | Work |
| --- | --- | --- | --- | --- | --- | --- | --- | --- | --- | --- | --- | --- | --- |
| 59 | 4 | **Entrega Etapa Desarrollo e Implementacion** | 0d | 2016-11-01 | 2016-11-01 |  |  |  |  |  |  |  | 3200h |
| 60 | 4.1 | **Desarrollo e Implementación** | 100d | 2016-06-14 | 2016-11-01 | 24 |  |  |  |  |  | Asesor; DBA; Programador 1; Programador2; Programador3; Programador4; QA Junior; QA Senior | 3200h |
| 61 | 4.1.1 | **Programación y Documentación** | 12d | 2016-10-06 | 2016-10-24 |  | 2016-04-12 | 2016-11-01 | 291.75d | 0d |  |  |  |
| 62 | 4.1.1.1 | Documentación completa de un modulo(código fuente) | 12d | 2016-10-06 | 2016-10-24 | 81 |  |  |  | 0d |  |  |  |
| 63 | 4.1.2 | **Implementación** | 59d | 2016-06-14 | 2016-09-05 |  | 2016-04-12 | 2016-04-12 | 2d? | 0d |  |  |  |
| 64 | 4.1.2.1 | Establecer plan de implementacion | 5d | 2016-06-14 | 2016-06-21 |  |  |  |  | 0d |  |  |  |
| 65 | 4.1.2.2 | Elaborar plan de implementacion | 7d | 2016-06-21 | 2016-06-30 | 64 |  |  |  | 0d |  |  |  |
| 66 | 4.1.2.3 | Ejecutar plan de implementacion | 30d | 2016-06-30 | 2016-08-11 | 65 |  |  |  | 0d |  |  |  |
| 67 | 4.1.2.4 | Crear la linea base de frontend | 3d | 2016-08-11 | 2016-08-16 | 66 | 2016-04-12 | 2016-04-12 | 2d? | 0d |  |  |  |
| 68 | 4.1.2.5 | Estableces la jerarquia de carpetas de frontend | 4d | 2016-08-11 | 2016-08-17 | 66 | 2016-04-12 | 2016-04-12 | 2d? | 6d | 0d |  |  |
| 69 | 4.1.2.6 | Crear archivos iniciales(imágenes temp,htlm base) y maqueta inicial | 4d | 2016-08-17 | 2016-08-23 | 68 | 2016-04-12 | 2016-04-12 | 2d? | 6d | 0d |  |  |
| 70 | 4.1.2.7 | Importar e integrar librerias comunes de estilos | 3d | 2016-08-23 | 2016-08-26 | 69 | 2016-04-12 | 2016-04-12 | 2d? | 6d |  |  |  |
| 71 | 4.1.2.8 | Importar e integrar librerias comunes de comportamiento(js) | 3d | 2016-08-16 | 2016-08-19 | 67 | 2016-04-12 | 2016-04-12 | 2d? | 11d |  |  |  |
| 72 | 4.1.2.9 | Elaborar diseño grafico del sitio | 4d | 2016-08-16 | 2016-08-22 | 67 | 2016-04-12 | 2016-04-12 | 2d? | 10d |  |  |  |
| 73 | 4.1.2.10 | Crear la linea base de backend(crear un nuevo proyacto con conf inicial) | 3d | 2016-08-16 | 2016-08-19 | 67 | 2016-04-12 | 2016-04-12 | 2d? | 0d |  |  |  |
| 74 | 4.1.2.11 | Crear la base de datos | 3d | 2016-08-19 | 2016-08-24 | 73 | 2016-04-12 | 2016-04-12 | 2d? | 8d |  |  |  |
| 75 | 4.1.2.12 | Configurar la base de datos | 4d | 2016-08-19 | 2016-08-25 | 73 | 2016-04-12 | 2016-04-12 | 2d? | 7d |  |  |  |
| 76 | 4.1.2.13 | Armar esquema de la bd | 4d | 2016-08-19 | 2016-08-25 | 73 | 2016-04-12 | 2016-04-12 | 2d? | 0d |  |  |  |
| 77 | 4.1.2.14 | Programar el mapeo objeto-relacional | 3d | 2016-08-25 | 2016-08-30 | 76 | 2016-04-12 | 2016-04-12 | 2d? | 4d |  |  |  |
| 78 | 4.1.2.15 | Implementar roles y restriciones de usuarios | 4d | 2016-08-25 | 2016-08-31 | 76 | 2016-04-12 | 2016-04-12 | 2d? | 3d |  |  |  |
| 79 | 4.1.2.16 | Implementar validaciones de datos | 5d | 2016-08-25 | 2016-09-01 | 76 |  |  |  | 2d |  |  |  |
| 80 | 4.1.2.17 | Implementar consideraciones de seguridad | 7d | 2016-08-25 | 2016-09-05 | 76 | 2016-04-12 | 2016-04-12 | 2d? | 0d |  |  |  |
| 81 | 4.1.3 | **Ejecución, documentación y retroalimentación de pruebas** | 23d | 2016-09-05 | 2016-10-06 | 63 | 2016-04-12 | 2016-04-12 | 2d? | 0d |  |  |  |
| 82 | 4.1.3.1 | Desplegar sistema de entorno de testing | 4d | 2016-09-05 | 2016-09-09 | 80 | 2016-04-12 | 2016-04-12 | 2d? | 0d |  |  |  |
| 83 | 4.1.3.2 | Ejecutar pruebas planificadas | 6d | 2016-09-09 | 2016-09-19 | 80, 82 | 2016-04-12 | 2016-04-12 | 1.75d? | 0d |  |  |  |
| 84 | 4.1.3.3 | Elaborar reportes de pruebas | 6d | 2016-09-19 | 2016-09-27 | 83 | 2016-04-12 | 2016-04-12 | 2d? | 0d |  |  |  |
| 85 | 4.1.3.4 | Elaborar documentacion | 7d | 2016-09-27 | 2016-10-06 | 84 | 2016-04-12 | 2016-04-12 | 2d? | 0d |  |  |  |

| ID | WBS | Task | Type | Duration | Start | Finish | Predecessors | Baseline start | Baseline finish | Baseline duration | Total slack | Free slack |
| --- | --- | --- | --- | --- | --- | --- | --- | --- | --- | --- | --- | --- |
| 86 | 4.1.4 | **Planificación de Capacitación** |  | 4d | 2016-10-24 | 2016-10-28 | 61 | 2016-04-12 | 2016-04-12 | 2d? | 2d |  |
| 87 | 4.1.4.1 | Establecer plan de capacitación |  | 1d | 2016-10-24 | 2016-10-25 |  |  |  |  | 2d | 0d |
| 88 | 4.1.4.2 | Elaborar plan de capacitación |  | 1d | 2016-10-25 | 2016-10-26 | 87 |  |  |  | 2d | 0d |
| 89 | 4.1.4.3 | Ejecutar plan de capacitación |  | 2d | 2016-10-26 | 2016-10-28 | 88 |  |  |  | 2d |  |
| 90 | 4.1.5 | **Manual de usuario del sistema** |  | 6d | 2016-10-24 | 2016-11-01 | 61 | 2016-04-12 | 2016-04-12 | 1.75d? | 0d |  |
| 91 | 4.1.5.1 | Elaborar manual de usuario |  | 6d | 2016-10-24 | 2016-11-01 |  | 2016-04-12 | 2016-04-12 | 2d? | 0d |  |
| 92 | 5 | Demo del Proyecto | milestone, manual | 0d | 2016-11-08 | 2016-11-08 |  |  |  |  |  |  |
| 93 | 6 | 9ª Exposición Anual de Proyectos de Sistemas | milestone, manual | 0d | 2016-11-15 | 2016-11-15 |  |  |  |  |  |  |
